# GANTT_GESTIÓN_FLOTA

Schedule from MS Project, 2025-03-12 to 2025-07-07, A marks actual dates.

## Calendars

- Estándar: Mon-Fri 09:00-13:00, 15:00-19:00; Sat-Sun off. Exceptions (off unless hours are given): 2025-04-18 (Viernes santo), 2025-05-01 (Día del trabajador), 2025-05-21 (Día de las glorias navales), 2025-06-20 (Dia de los pueblos indígenas).

## Resources

| Resource |
| --- |
| Luis Arias |
| Luis Arias, Pedro San Martín |
| Matías Bello |
| Pedro San Martín, Matías Bello |
| Luis Arias, Pedro San Martín, Matías Bello |
| Luis Arias, Matías Bello |

## Schedule

| ID | WBS | Task | Type | Duration | Start | Finish | Predecessors | Complete | Remaining | Total slack | Free slack | Resources | Work | Actual work |
| --- | --- | --- | --- | --- | --- | --- | --- | --- | --- | --- | --- | --- | --- | --- |
| 1 | 1 | **FASE 1: INICIACIÓN** |  | 4d | 2025-03-12 | 2025-03-17 |  |  |  | 1.5d | 0d |  | 32h |  |
| 2 | 1.1 | Desarrollar el Acta de Constitución del Proyecto |  | 2d | 2025-03-12 | 2025-03-13 |  |  |  | 1.5d | 0d | Luis Arias | 16h |  |
| 3 | 1.2 | Hito: Acta de Constitución del Proyecto Aprobada | milestone | 0d | 2025-03-13 | 2025-03-13 | 2 |  |  | 1.5d | 0d |  |  |  |
| 4 | 1.3 | Definir el propósito, objetivos, recursos y criterios de éxito |  | 2d | 2025-03-14 | 2025-03-17 | 2, 3 |  |  | 1.5d | 0d | Luis Arias, Pedro San Martín | 16h |  |
| 5 | 1.4 | Hito: Finalización de reunión Kick-Off | milestone | 0d | 2025-03-17 | 2025-03-17 | 4 |  |  | 1.5d |  |  |  |  |
| 6 | 2 | **FASE 2: PLANIFICACIÓN** |  | 14d | 2025-03-18 A | 2025-04-04 | 1 | 11% | 12.5d | 0d |  |  | 104h | 12h |
| 7 | 2.1 | Levantamiento de requerimientos |  | 1d | 2025-03-18 | 2025-03-18 | 2, 4 |  |  | 1.5d | 0d |  |  |  |
| 8 | 2.2 | Desarrollar el plan de gestión del proyecto |  | 4d | 2025-03-19 | 2025-03-24 | 2, 4, 7 |  |  | 1.5d | 0d | Luis Arias | 32h |  |
| 9 | 2.3 | Definir el alcance, estructura del trabajo y recursos |  | 4d | 2025-03-25 | 2025-03-28 | 8 |  |  | 1.5d | 0d | Luis Arias, Pedro San Martín | 32h |  |
| 10 | 2.4 | Crear cronograma y estimar costos |  | 3d | 2025-03-31 A | 2025-04-02 | 9 | 50% | 1.5d | 0d |  | Luis Arias | 24h | 12h |
| 11 | 2.5 | Planificar la gestión de riesgos y calidad |  | 2d | 2025-04-03 | 2025-04-04 | 10 |  |  | 0d |  | Luis Arias, Pedro San Martín | 16h |  |
| 12 | 2.6 | Hito: Finalización y validación del plan general de gestión de proyecto | milestone | 0d | 2025-04-04 | 2025-04-04 | 11 |  |  | 0d |  |  |  |  |
| 13 | 3 | **FASE 3: DISEÑO** |  | 10d | 2025-04-07 | 2025-04-21 | 6 |  |  | 0d |  |  | 80h |  |
| 14 | 3.1 | Definir la arquitectura del sistema y diseño de base de datos |  | 4d | 2025-04-07 | 2025-04-10 | 9 |  |  | 0d |  | Luis Arias, Pedro San Martín | 32h |  |
| 15 | 3.2 | Crear prototipos de interfaces de usuario |  | 4d | 2025-04-11 | 2025-04-16 | 14 |  |  | 0d |  | Matías Bello | 32h |  |
| 16 | 3.3 | Documentar procesos, seguridad y estrategias de despliegue |  | 2d | 2025-04-17 | 2025-04-21 | 15 |  |  | 0d |  | Luis Arias, Pedro San Martín | 16h |  |
| 17 | 3.4 | Hito: Finalización y aprobación de la etapa de diseño | milestone | 0d | 2025-04-21 | 2025-04-21 | 16 |  |  | 0d |  | Pedro San Martín, Matías Bello |  |  |
| 18 | 4 | **FASE 4: DESARROLLO** |  | 30d | 2025-04-22 | 2025-06-04 | 13 |  |  | 0d |  |  | 240h |  |
| 19 | 4.1 | Configuración del entorno de desarrollo |  | 2d | 2025-04-22 | 2025-04-23 | 14, 15 |  |  | 0d |  | Pedro San Martín, Matías Bello | 16h |  |
| 20 | 4.2 | Desarrollo de la base de datos, frontend y backend |  | 19d | 2025-04-24 | 2025-05-22 | 19 |  |  | 0d |  | Pedro San Martín, Matías Bello | 152h |  |
| 21 | 4.3 | Preparación para el despliegue |  | 3d | 2025-05-23 | 2025-05-27 | 20 |  |  | 0d |  | Luis Arias, Pedro San Martín, Matías Bello | 24h |  |
| 22 | 4.4 | Integración total del sistema |  | 6d | 2025-05-28 | 2025-06-04 | 21 |  |  | 0d |  | Pedro San Martín, Matías Bello | 48h |  |
| 23 | 4.5 | Hito: Finalización de la etapa de desarrollo | milestone | 0d | 2025-06-04 | 2025-06-04 | 22 |  |  | 0d |  | Pedro San Martín, Matías Bello |  |  |
| 24 | 5 | **FASE 5: PRUEBAS** |  | 8d | 2025-06-05 | 2025-06-16 | 18 |  |  | 0d |  |  | 64h |  |
| 25 | 5.1 | Realizar pruebas unitarias, de integración y de seguridad |  | 4d | 2025-06-05 | 2025-06-10 | 22 |  |  | 0d |  | Matías Bello | 32h |  |
| 26 | 5.2 | Validar la usabilidad y compatibilidad del sistema |  | 2d | 2025-06-11 | 2025-06-12 | 25 |  |  | 0d |  | Pedro San Martín, Matías Bello | 16h |  |
| 27 | 5.3 | Corregir errores y documentar los resultados |  | 2d | 2025-06-13 | 2025-06-16 | 26 |  |  | 0d |  | Luis Arias, Pedro San Martín, Matías Bello | 16h |  |
| 28 | 5.4 | Hito: Finalización de la validación de pruebas | milestone | 0d | 2025-06-16 | 2025-06-16 | 27 |  |  | 0d |  | Luis Arias, Pedro San Martín, Matías Bello |  |  |

| ID | WBS | Task | Type | Duration | Start | Finish | Predecessors | Total slack | Constraint | Resources | Work |
| --- | --- | --- | --- | --- | --- | --- | --- | --- | --- | --- | --- |
| 29 | 6 | **FASE 6: IMPLANTACIÓN** |  | 10d | 2025-06-17 | 2025-07-01 | 24 | 0d |  |  | 80h |
| 30 | 6.1 | Configurar entorno de producción y desplegar el sistema |  | 3d | 2025-06-17 | 2025-06-19 | 27 | 0d |  | Luis Arias, Pedro San Martín, Matías Bello | 24h |
| 31 | 6.2 | Validar seguridad, tiempos y rendimiento en producción |  | 4d | 2025-06-23 | 2025-06-26 | 30 | 0d |  | Luis Arias, Pedro San Martín, Matías Bello | 32h |
| 32 | 6.3 | Hito: Sistema en producción | milestone | 0d | 2025-06-26 | 2025-06-26 | 31 | 0d |  |  |  |
| 33 | 6.4 | Capacitar a usuarios finales y administrar cambios post-lanzamiento |  | 3d | 2025-06-27 | 2025-07-01 | 31, 32 | 0d |  | Luis Arias, Matías Bello | 24h |
| 34 | 6.5 | Hito: Finalización de la capacitación de usuarios finales | milestone | 0d | 2025-07-01 | 2025-07-01 | 33 | 0d | start no earlier than 2025-06-24 |  |  |
| 35 | 7 | **FASE 7: CIERRE** |  | 4d | 2025-07-02 | 2025-07-07 | 29 | 0d |  |  | 32h |
| 36 | 7.1 | Revisión de la documentación final y gestión de riesgos |  | 1d | 2025-07-02 | 2025-07-02 | 33 | 0d |  | Luis Arias, Matías Bello | 8h |
| 37 | 7.2 | Cierre de contratos y adquisición de recursos |  | 2d | 2025-07-03 | 2025-07-04 | 36 | 0d |  | Luis Arias | 16h |
| 38 | 7.3 | Validación de entregables finales |  | 1d | 2025-07-07 | 2025-07-07 | 37 | 0d |  | Luis Arias, Pedro San Martín, Matías Bello | 8h |
| 39 | 7.4 | Hito: Cierre formal del proyecto con documentación y entregables validados | milestone | 0d | 2025-07-07 | 2025-07-07 | 38 | 0d | start no earlier than 2025-06-30 |  |  |
